# ErasmusNest GC04 · Planificación por sprints

How a schedule from ProjectLibre changed from version to version. A marks actual dates.

## Version 1 (saved 2026-10-15)

Note of the change: Hito 4: proyectos ProjectLibre (.pod) con línea base y Gantt en PDF

| ID | WBS | Task | Duration | Start | Finish | Predecessors | Constraint |
| --- | --- | --- | --- | --- | --- | --- | --- |
| 1 | 1 | **IT-001 · R1** | 5d | 2026-10-21 | 2026-10-27 |  |  |
| 2 |  | MGT IT-001 Sprint planning y refinamiento | 5d | 2026-10-21 | 2026-10-27 |  | start no earlier than 2026-10-21 |
| 3 |  | US-001 Registrar cuenta con correo institucional | 5d | 2026-10-21 | 2026-10-27 |  | start no earlier than 2026-10-21 |
| 4 |  | US-002 Verificar la cuenta mediante el correo institucional (parte 1 de 2) | 5d | 2026-10-21 | 2026-10-27 | 3SS | start no earlier than 2026-10-21 |
| 5 |  | MGT IT-001 Daily asíncrona | 5d | 2026-10-21 | 2026-10-27 |  | start no earlier than 2026-10-21 |
| 6 |  | MGT IT-001 Sprint review y retrospectiva | 5d | 2026-10-21 | 2026-10-27 |  | start no earlier than 2026-10-21 |
| 7 |  | MGT IT-001 Coordinación del rol | 5d | 2026-10-21 | 2026-10-27 |  | start no earlier than 2026-10-21 |
| 8 | 2 | **IT-002 · R1** | 5d | 2026-10-28 | 2026-11-03 |  |  |
| 9 |  | MGT IT-002 Sprint planning y refinamiento | 5d | 2026-10-28 | 2026-11-03 |  | start no earlier than 2026-10-28 |
| 10 |  | US-002 Verificar la cuenta mediante el correo institucional (parte 2 de 2) | 5d | 2026-10-28 | 2026-11-03 | 4 | start no earlier than 2026-10-28 |
| 11 |  | US-003 Iniciar y cerrar sesión | 5d | 2026-10-28 | 2026-11-03 | 3 | start no earlier than 2026-10-28 |
| 12 |  | MGT IT-002 Daily asíncrona | 5d | 2026-10-28 | 2026-11-03 |  | start no earlier than 2026-10-28 |
| 13 |  | MGT IT-002 Sprint review y retrospectiva | 5d | 2026-10-28 | 2026-11-03 |  | start no earlier than 2026-10-28 |
| 14 |  | MGT IT-002 Coordinación del rol | 5d | 2026-10-28 | 2026-11-03 |  | start no earlier than 2026-10-28 |
| 15 |  | Hito R1 · Release 1 entregada | 0d | 2026-11-03 | 2026-11-03 | 10, 11 |  |
| 16 | 3 | **IT-003 · R2** | 5d | 2026-11-04 | 2026-11-10 |  |  |
| 17 |  | MGT IT-003 Sprint planning y refinamiento | 5d | 2026-11-04 | 2026-11-10 |  | start no earlier than 2026-11-04 |
| 18 |  | US-006 Publicar el anuncio de mi habitación (parte 1 de 2) | 5d | 2026-11-04 | 2026-11-10 | 10, 11 | start no earlier than 2026-11-04 |
| 19 |  | MGT IT-003 Daily asíncrona | 5d | 2026-11-04 | 2026-11-10 |  | start no earlier than 2026-11-04 |
| 20 |  | MGT IT-003 Sprint review y retrospectiva | 5d | 2026-11-04 | 2026-11-10 |  | start no earlier than 2026-11-04 |
| 21 |  | MGT IT-003 Coordinación del rol | 5d | 2026-11-04 | 2026-11-10 |  | start no earlier than 2026-11-04 |
| 22 | 4 | **IT-004 · R2** | 5d | 2026-11-11 | 2026-11-17 |  |  |
| 23 |  | MGT IT-004 Sprint planning y refinamiento | 5d | 2026-11-11 | 2026-11-17 |  | start no earlier than 2026-11-11 |
| 24 |  | US-006 Publicar el anuncio de mi habitación (parte 2 de 2) | 5d | 2026-11-11 | 2026-11-17 | 18 | start no earlier than 2026-11-11 |
| 25 |  | US-012 Listar los anuncios disponibles | 5d | 2026-11-11 | 2026-11-17 | 24SS | start no earlier than 2026-11-11 |
| 26 |  | MGT IT-004 Daily asíncrona | 5d | 2026-11-11 | 2026-11-17 |  | start no earlier than 2026-11-11 |
| 27 |  | MGT IT-004 Sprint review y retrospectiva | 5d | 2026-11-11 | 2026-11-17 |  | start no earlier than 2026-11-11 |
| 28 |  | MGT IT-004 Coordinación del rol | 5d | 2026-11-11 | 2026-11-17 |  | start no earlier than 2026-11-11 |
| 29 |  | Hito R2 · Release 2 entregada | 0d | 2026-11-17 | 2026-11-17 | 25 |  |
| 30 | 5 | **IT-005 · R3** | 5d | 2026-11-18 | 2026-11-24 |  |  |
| 31 |  | MGT IT-005 Sprint planning y refinamiento | 5d | 2026-11-18 | 2026-11-24 |  | start no earlier than 2026-11-18 |
| 32 |  | US-015 Ver el detalle de un anuncio con su estado | 5d | 2026-11-18 | 2026-11-24 | 25 | start no earlier than 2026-11-18 |
| 33 |  | US-017 Contactar con el oferente desde un anuncio (parte 1 de 2) | 5d | 2026-11-18 | 2026-11-24 | 32SS, 10 | start no earlier than 2026-11-18 |
| 34 |  | MGT IT-005 Daily asíncrona | 5d | 2026-11-18 | 2026-11-24 |  | start no earlier than 2026-11-18 |
| 35 |  | MGT IT-005 Sprint review y retrospectiva | 5d | 2026-11-18 | 2026-11-24 |  | start no earlier than 2026-11-18 |
| 36 |  | MGT IT-005 Coordinación del rol | 5d | 2026-11-18 | 2026-11-24 |  | start no earlier than 2026-11-18 |
| 37 | 6 | **IT-006 · R3** | 5d | 2026-11-25 | 2026-12-01 |  |  |
| 38 |  | MGT IT-006 Sprint planning y refinamiento | 5d | 2026-11-25 | 2026-12-01 |  | start no earlier than 2026-11-25 |
| 39 |  | US-017 Contactar con el oferente desde un anuncio (parte 2 de 2) | 5d | 2026-11-25 | 2026-12-01 | 33 | start no earlier than 2026-11-25 |
| 40 |  | US-023 Guion de instalación y evaluación | 5d | 2026-11-25 | 2026-12-01 | 39SS | start no earlier than 2026-11-25 |
| 41 |  | MGT IT-006 Daily asíncrona | 5d | 2026-11-25 | 2026-12-01 |  | start no earlier than 2026-11-25 |
| 42 |  | MGT IT-006 Sprint review y retrospectiva | 5d | 2026-11-25 | 2026-12-01 |  | start no earlier than 2026-11-25 |
| 43 |  | MGT IT-006 Coordinación del rol | 5d | 2026-11-25 | 2026-12-01 |  | start no earlier than 2026-11-25 |
| 44 |  | Hito R3 · Release 3 entregada (fin del proyecto) | 0d | 2026-12-01 | 2026-12-01 | 40 |  |

## Version 2 (saved 2026-10-16)

Note of the change: Merge pull request #18 from UniExtremadura/hito4/projectlibre-hitos

Last finish stays 2026-12-01.

Changed:

| ID | Task | Predecessors |
| --- | --- | --- |
| 29 | Hito R2 · Release 2 entregada | 25 → 24, 25 |
| 44 | Hito R3 · Release 3 entregada (fin del proyecto) | 40 → 39, 40 |

## Version 3 (saved 2026-11-05)

Note of the change: ProjectLibre v3 alineado con el Excel v03

Last finish stays 2026-12-01.

Added:

| ID | Task | Duration | Start | Finish | Predecessors | Constraint | Resources |
| --- | --- | --- | --- | --- | --- | --- | --- |
| 8 | MGT IT-001 Reserva de imprevistos | 3.41d | 2026-10-21 | 2026-10-27 | 2 | start no earlier than 2026-10-21 | Hugo [3.93%]; Gled [4.91%]; José [2.7%] |
| 11 | US-004 Gestionar el perfil básico | 1.41d | 2026-10-28 | 2026-10-30 | 5, 10 | start no earlier than 2026-10-28 | Hugo [8.89%]; Gled [3.56%]; José [14.22%] |
| 12 | US-006 Publicar el anuncio de mi habitación | 1.91d | 2026-10-28 | 2026-10-31 | 4, 5, 10 | start no earlier than 2026-10-28 | Hugo [7.87%]; Gled [11.8%]; José [13.11%] |
| 13 | US-009 Cerrar mi anuncio | 1d | 2026-11-01 | 2026-11-02 | 12 | start no earlier than 2026-11-01 | Hugo [12.5%]; Gled [10%]; José [15%] |
| 16 | MGT IT-002 Reserva de imprevistos | 3.03d | 2026-10-28 | 2026-11-03 | 10 | start no earlier than 2026-10-28 | Hugo [3.72%]; Gled [4.66%]; José [2.69%] |
| 22 | US-007 Añadir fotos al anuncio | 2.41d | 2026-11-04 | 2026-11-08 | 12, 20 | start no earlier than 2026-11-04 | Hugo [3.64%]; Gled [7.27%]; José [15.06%] |
| 23 | US-010 Ver mis anuncios y su estado | 2d | 2026-11-07 | 2026-11-10 | 12, 20 | start no earlier than 2026-11-07 | Hugo [5%]; Gled [1.25%]; José [12.5%] |
| 26 | MGT IT-003 Reserva de imprevistos | 3.41d | 2026-11-04 | 2026-11-10 | 20 | start no earlier than 2026-11-04 | Hugo [3.93%]; Gled [4.91%]; José [2.7%] |
| 29 | US-013 Filtrar anuncios por fechas de estancia | 1.91d | 2026-11-11 | 2026-11-14 | 21, 28 | start no earlier than 2026-11-11 | Hugo [8.52%]; Gled [10.49%]; José [13.77%] |
| 30 | US-014 Filtrar anuncios por zona | 1.41d | 2026-11-11 | 2026-11-13 | 21, 28 | start no earlier than 2026-11-11 | Hugo [8.89%]; Gled [5.33%]; José [12.44%] |
| 34 | MGT IT-004 Reserva de imprevistos | 3.03d | 2026-11-11 | 2026-11-17 | 28 | start no earlier than 2026-11-11 | Hugo [3.72%]; Gled [4.66%]; José [2.69%] |
| 40 | US-008 Editar mi anuncio | 1.41d | 2026-11-18 | 2026-11-20 | 12, 38 | start no earlier than 2026-11-18 | Hugo [8.89%]; Gled [3.56%]; José [14.22%] |
| 41 | US-022 Cargar un conjunto de datos sintéticos | 2d | 2026-11-21 | 2026-11-24 | 3, 12, 38 | start no earlier than 2026-11-21 | Hugo [6.25%]; Gled [8.12%]; José [16.88%] |
| 44 | MGT IT-005 Reserva de imprevistos | 3.41d | 2026-11-18 | 2026-11-24 | 38 | start no earlier than 2026-11-18 | Hugo [3.93%]; Gled [4.91%]; José [2.7%] |
| 47 | US-018 Mantener una conversación | 1.41d | 2026-11-25 | 2026-11-27 | 39, 46 | start no earlier than 2026-11-25 | Hugo [8.89%]; Gled [12.44%]; José [23.11%] |
| 48 | US-019 Aviso de mensajes nuevos | 1.5d | 2026-11-28 | 2026-11-30 | 47 | start no earlier than 2026-11-28 | Hugo [4.17%]; Gled [5%]; José [7.5%] |
| 52 | MGT IT-006 Reserva de imprevistos | 3.03d | 2026-11-25 | 2026-12-01 | 46 | start no earlier than 2026-11-25 | Hugo [3.72%]; Gled [4.66%]; José [2.69%] |

Removed: 6 MGT IT-001 Sprint review y retrospectiva; 10 US-002 Verificar la cuenta mediante el correo institucional (parte 2 de 2); 18 US-006 Publicar el anuncio de mi habitación (parte 1 de 2); 20 MGT IT-003 Sprint review y retrospectiva; 24 US-006 Publicar el anuncio de mi habitación (parte 2 de 2); 33 US-017 Contactar con el oferente desde un anuncio (parte 1 de 2); 35 MGT IT-005 Sprint review y retrospectiva

Changed:

| ID | Task | Start | Finish | Duration | Predecessors | Other |
| --- | --- | --- | --- | --- | --- | --- |
| 1 | **IT-001 · R1** |  |  | 5d → 3.5d |  |  |
| 2 | MGT IT-001 Sprint planning y refinamiento |  | 2026-10-27 → 2026-10-21 (-6d) | 5d → 0.09d |  | resources Hugo [1.88%]; Gled [1.88%]; José [1.88%] → Hugo; Gled; José; baseline finish 2026-10-27 → 2026-10-21 |
| 3 | US-001 Registrar cuenta con correo institucional |  | 2026-10-27 → 2026-10-23 (-4d) | 5d → 1.41d | none → 2 | resources Hugo [3.75%]; Gled [5.25%]; José [3.5%] → Hugo [13.33%]; Gled [18.67%]; José [12.44%]; baseline finish 2026-10-27 → 2026-10-23 |
| 4 | US-002 Verificar la cuenta mediante el correo institucional | 2026-10-21 → 2026-10-24 (+3d) |  | 5d → 2d | 3SS → 3 | was named US-002 Verificar la cuenta mediante el correo institucional (parte 1 de 2); constraint start no earlier than 2026-10-21 → start no earlier than 2026-10-24; resources Hugo [2%]; José [2.5%] → Hugo [7.5%]; Gled [9.38%]; José [14.37%]; baseline start 2026-10-21 → 2026-10-24 |
| 5 | US-003 Iniciar y cerrar sesión | 2026-10-28 → 2026-10-24 (-4d) | 2026-11-03 → 2026-10-27 (-7d) | 5d → 2d |  | constraint start no earlier than 2026-10-28 → start no earlier than 2026-10-24; resources Hugo [3.75%]; Gled [0.75%]; José [3%] → Hugo [6.88%]; José [11.88%]; baseline start 2026-10-28 → 2026-10-24; baseline finish 2026-11-03 → 2026-10-27 |
| 6 | MGT IT-001 Daily asíncrona |  |  | 5d → 3.41d | none → 2 | resources Hugo [1%]; Gled [1%]; José [1%] → Hugo [1.47%]; Gled [1.47%]; José [1.47%] |
| 7 | MGT IT-001 Coordinación del rol |  |  | 5d → 3.41d | none → 2 | resources Hugo [1.25%]; Gled [1.25%]; José [1.88%] → Hugo [1.83%]; Gled [1.83%]; José [1.83%] |
| 9 | **IT-002 · R1** |  |  | 5d → 3.23d |  |  |
| 10 | MGT IT-002 Sprint planning y refinamiento |  | 2026-11-03 → 2026-10-28 (-6d) | 5d → 0.09d |  | resources Hugo [1.88%]; Gled [1.88%]; José [1.88%] → Hugo; Gled; José; baseline finish 2026-11-03 → 2026-10-28 |
| 14 | MGT IT-002 Daily asíncrona |  |  | 5d → 3.03d | none → 10 | resources Hugo [1%]; Gled [1%]; José [1%] → Hugo [1.65%]; Gled [1.65%]; José [1.65%] |
| 15 | MGT IT-002 Coordinación del rol |  |  | 5d → 3.03d | none → 10 | resources Hugo [1.25%]; Gled [1.25%]; José [1.88%] → Hugo [2.06%]; Gled [2.06%]; José [2.06%] |
| 17 | MGT IT-002 Sprint review y retrospectiva | 2026-10-28 → 2026-11-03 (+6d) |  | 5d → 0.1d | none → 11, 12, 13 | constraint start no earlier than 2026-10-28 → start no earlier than 2026-11-03; resources Hugo [1.05%]; Gled [1.05%]; José [1.05%] → Hugo; Gled; José; baseline start 2026-10-28 → 2026-11-03 |
| 18 | Hito R1 · Release 1 entregada |  |  |  | US-002 Verificar la cuenta mediante el correo institucional (parte 2 de 2), 5 → 17 |  |
| 19 | **IT-003 · R2** |  |  | 5d → 3.5d |  |  |
| 20 | MGT IT-003 Sprint planning y refinamiento |  | 2026-11-10 → 2026-11-04 (-6d) | 5d → 0.09d |  | resources Hugo [1.88%]; Gled [1.88%]; José [1.88%] → Hugo; Gled; José; baseline finish 2026-11-10 → 2026-11-04 |
| 21 | US-012 Listar los anuncios disponibles | 2026-11-11 → 2026-11-04 (-7d) | 2026-11-17 → 2026-11-06 (-11d) | 5d → 1.41d | US-006 Publicar el anuncio de mi habitación (parte 2 de 2)SS → 12, 20 | constraint start no earlier than 2026-11-11 → start no earlier than 2026-11-04; resources Hugo [4%]; Gled [2%]; José [1.5%] → Hugo [8%]; Gled [5.33%]; José [13.33%]; baseline start 2026-11-11 → 2026-11-04; baseline finish 2026-11-17 → 2026-11-06 |
| 24 | MGT IT-003 Daily asíncrona |  |  | 5d → 3.41d | none → 20 | resources Hugo [1%]; Gled [1%]; José [1%] → Hugo [1.47%]; Gled [1.47%]; José [1.47%] |
| 25 | MGT IT-003 Coordinación del rol |  |  | 5d → 3.41d | none → 20 | resources Hugo [1.25%]; Gled [1.25%]; José [1.88%] → Hugo [1.83%]; Gled [1.83%]; José [1.83%] |
| 27 | **IT-004 · R2** |  |  | 5d → 3.23d |  |  |
| 28 | MGT IT-004 Sprint planning y refinamiento |  | 2026-11-17 → 2026-11-11 (-6d) | 5d → 0.09d |  | resources Hugo [1.88%]; Gled [1.88%]; José [1.88%] → Hugo; Gled; José; baseline finish 2026-11-17 → 2026-11-11 |
| 31 | US-015 Ver el detalle de un anuncio con su estado | 2026-11-18 → 2026-11-14 (-4d) | 2026-11-24 → 2026-11-16 (-8d) | 5d → 1.5d | 21 → 21, 28 | constraint start no earlier than 2026-11-18 → start no earlier than 2026-11-14; resources Hugo [2.5%]; Gled [1.5%]; José [3.5%] → Hugo [8.33%]; Gled [7.5%]; José [9.17%]; baseline start 2026-11-18 → 2026-11-14; baseline finish 2026-11-24 → 2026-11-16 |
| 32 | MGT IT-004 Daily asíncrona |  |  | 5d → 3.03d | none → 28 | resources Hugo [1%]; Gled [1%]; José [1%] → Hugo [1.65%]; Gled [1.65%]; José [1.65%] |
| 33 | MGT IT-004 Coordinación del rol |  |  | 5d → 3.03d | none → 28 | resources Hugo [1.25%]; Gled [1.25%]; José [1.88%] → Hugo [2.06%]; Gled [2.06%]; José [2.06%] |
| 35 | MGT IT-004 Sprint review y retrospectiva | 2026-11-11 → 2026-11-17 (+6d) |  | 5d → 0.1d | none → 29, 30, 31 | constraint start no earlier than 2026-11-11 → start no earlier than 2026-11-17; resources Hugo [1.05%]; Gled [1.05%]; José [1.05%] → Hugo; Gled; José; baseline start 2026-11-11 → 2026-11-17 |
| 36 | Hito R2 · Release 2 entregada |  |  |  | US-006 Publicar el anuncio de mi habitación (parte 2 de 2), 21 → 35 |  |
| 37 | **IT-005 · R3** |  |  | 5d → 3.5d |  |  |
| 38 | MGT IT-005 Sprint planning y refinamiento |  | 2026-11-24 → 2026-11-18 (-6d) | 5d → 0.09d |  | resources Hugo [1.88%]; Gled [1.88%]; José [1.88%] → Hugo; Gled; José; baseline finish 2026-11-24 → 2026-11-18 |
| 39 | US-017 Contactar con el oferente desde un anuncio | 2026-11-25 → 2026-11-18 (-7d) | 2026-12-01 → 2026-11-21 (-10d) | 5d → 1.91d | US-017 Contactar con el oferente desde un anuncio (parte 1 de 2) → 31, 4, 38 | was named US-017 Contactar con el oferente desde un anuncio (parte 2 de 2); constraint start no earlier than 2026-11-25 → start no earlier than 2026-11-18; resources Gled [2.75%]; José [2.75%] → Hugo [5.9%]; Gled [13.11%]; José [13.77%]; baseline start 2026-11-25 → 2026-11-18; baseline finish 2026-12-01 → 2026-11-21 |
| 42 | MGT IT-005 Daily asíncrona |  |  | 5d → 3.41d | none → 38 | resources Hugo [1%]; Gled [1%]; José [1%] → Hugo [1.47%]; Gled [1.47%]; José [1.47%] |
| 43 | MGT IT-005 Coordinación del rol |  |  | 5d → 3.41d | none → 38 | resources Hugo [1.25%]; Gled [1.25%]; José [1.88%] → Hugo [1.83%]; Gled [1.83%]; José [1.83%] |
| 45 | **IT-006 · R3** |  |  | 5d → 3.23d |  |  |
| 46 | MGT IT-006 Sprint planning y refinamiento |  | 2026-12-01 → 2026-11-25 (-6d) | 5d → 0.09d |  | resources Hugo [1.88%]; Gled [1.88%]; José [1.88%] → Hugo; Gled; José; baseline finish 2026-12-01 → 2026-11-25 |
| 49 | US-023 Guion de instalación y evaluación | 2026-11-25 → 2026-11-26 (+1d) | 2026-12-01 → 2026-11-30 (-1d) | 5d → 2.5d | 39SS → 39, 46 | constraint start no earlier than 2026-11-25 → start no earlier than 2026-11-26; resources Hugo [5%]; José [2.5%] → Hugo [8.5%]; José [6.5%]; baseline start 2026-11-25 → 2026-11-26; baseline finish 2026-12-01 → 2026-11-30 |
| 50 | MGT IT-006 Daily asíncrona |  |  | 5d → 3.03d | none → 46 | resources Hugo [1%]; Gled [1%]; José [1%] → Hugo [1.65%]; Gled [1.65%]; José [1.65%] |
| 51 | MGT IT-006 Coordinación del rol |  |  | 5d → 3.03d | none → 46 | resources Hugo [1.25%]; Gled [1.25%]; José [1.88%] → Hugo [2.06%]; Gled [2.06%]; José [2.06%] |
| 53 | MGT IT-006 Sprint review y retrospectiva | 2026-11-25 → 2026-12-01 (+6d) |  | 5d → 0.1d | none → 47, 48, 49 | constraint start no earlier than 2026-11-25 → start no earlier than 2026-12-01; resources Hugo [1.05%]; Gled [1.05%]; José [1.05%] → Hugo; Gled; José; baseline start 2026-11-25 → 2026-12-01 |
| 54 | Hito R3 · Release 3 entregada (fin del proyecto) |  |  |  | 39, 49 → 53 |  |
